# PROGRAMACIÓN ACTUALIZADA OK

Schedule from MS Project, 2025-04-26 to 2026-10-17.

## Calendars

- Estándar: Mon-Sun 08:00-12:00, 13:00-17:00.

## Schedule

| ID | WBS | Task | Type | Duration | Start | Finish | Predecessors | Total slack | Free slack |
| --- | --- | --- | --- | --- | --- | --- | --- | --- | --- |
| 1 | 1 | **CREACION DE LA CICLOVIA COMPRENDIDO ENTRE EL TRAMO AV.CUTERVO Y LA AV.HUACACHINA DEL DISTRITO DE ICA-ICA** |  | 540d | 2025-04-26 | 2026-10-17 |  | 0d |  |
| 2 | 1.1 | INICIO | milestone | 0d | 2025-04-26 | 2025-04-26 |  | 540d |  |
| 3 | 1.2 | **OBRAS PROVISIONALES Y PRELIMINARES** |  | 540d | 2025-04-26 | 2026-10-17 |  | 0d |  |
| 4 | 1.2.1 | **OBRAS PROVISIONALES** |  | 540d | 2025-04-26 | 2026-10-17 |  | 0d |  |
| 5 | 1.2.1.1 | MOVILIZACION Y DESMOVILIZACION DE EQUIPOS Y HERRAMIENTAS |  | 540d | 2025-04-26 | 2026-10-17 |  | 0d |  |
| 6 | 1.2.1.2 | ALQUILER DE PATIO DE MAQUINAS |  | 540d | 2025-04-26 | 2026-10-17 | 5SS | 0d |  |
| 7 | 1.2.1.3 | OFC. PERSONAL CLAVE Y ADMINISTRATIVO, CASETA DE COMEDOR Y VIGILANCIA |  | 200d | 2025-04-26 | 2025-11-11 | 5SS | 340d |  |
| 8 | 1.2.1.4 | ALQUILER DE LAVADEROS Y SS.HH P/ INST. OFC. |  | 540d | 2025-04-26 | 2026-10-17 |  | 0d |  |
| 9 | 1.2.1.5 | CARTEL DE OBRA DE 3.60 X 2.40 |  | 2d | 2025-04-26 | 2025-04-27 | 6SS | 538d |  |
| 10 | 1.2.1.6 | MALLA DE SEGURIDAD |  | 535d | 2025-05-01 | 2026-10-17 | 5SS+5d | 0d |  |
| 11 | 1.2.1.7 | FLETE TERRESTRE PARA LA OBRA |  | 360d | 2025-05-26 | 2026-05-20 | 5SS+30d | 150d |  |
| 12 | 1.2.2 | **TRABAJOS PRELIMINARES** |  | 510d | 2025-05-26 | 2026-10-17 |  | 0d |  |
| 13 | 1.2.2.1 | LIMPIEZA ANTES, DURANTE Y DESPUES DE LA OBRA |  | 480d | 2025-06-25 | 2026-10-17 | 5SS+60d | 0d |  |
| 14 | 1.2.2.2 | TALA Y RETIRO DE ARBOLES MAYORES DE 4M Y ELIMINACION DE RAICES |  | 260d | 2025-09-23 | 2026-06-09 | 5SS+150d | 61d | 0d |
| 15 | 1.2.2.3 | TALA Y RETIRO DE ARBOLES MENORES DE 4M Y ELIMINACION DE RAICES |  | 260d | 2025-09-23 | 2026-06-09 | 14SS | 130d |  |
| 16 | 1.2.2.4 | ELIMINACION DE MALEZA Y GRASS DE FACIL EXTRACCION |  | 230d | 2025-06-25 | 2026-02-09 | 5SS+60d | 250d |  |
| 17 | 1.2.2.5 | RETIRO DE LETREROS MAYORES A 5 METROS |  | 3d | 2025-11-12 | 2025-11-14 | 5SS+200d | 337d |  |
| 18 | 1.2.2.6 | RETIRO DE LETREROS MENORES A 5 METROS |  | 3d | 2026-03-22 | 2026-03-24 | 5SS+330d | 207d |  |
| 19 | 1.2.2.7 | DEMOLICION DE VEREDAS, MARTILLOS,LOSAS Y RAMPAS DE CONCRETO EXISTENTE |  | 230d | 2025-06-25 | 2026-02-09 | 5SS+60d | 0d |  |
| 20 | 1.2.2.8 | DEMOLICIÓN DE SARDINELES SUMERGIDO DE CONCRETO, H promedio = 0.15 m |  | 230d | 2025-06-25 | 2026-02-09 | 5SS+60d | 250d |  |
| 21 | 1.2.2.9 | DEMOLICIÓN DE SARDINELES DE CONCRETO, H promedio =0.35 m |  | 160d | 2025-06-25 | 2025-12-01 | 5SS+60d | 320d |  |
| 22 | 1.2.2.10 | DEMOLICION DE PAVIMENTO ASFALTICO |  | 320d | 2025-05-26 | 2026-04-10 | 5SS+30d | 190d | 0d |
| 23 | 1.2.2.11 | ACARREO MATERIAL EXCEDENTE |  | 320d | 2025-05-26 | 2026-04-10 | 22SS | 190d | 0d |
| 24 | 1.2.2.12 | ELIMINACION DE MATERIAL PROCEDENTE DE DEMOLICION |  | 320d | 2025-05-26 | 2026-04-10 | 23SS | 190d |  |

| ID | WBS | Task | Duration | Start | Finish | Predecessors | Total slack | Free slack |
| --- | --- | --- | --- | --- | --- | --- | --- | --- |
| 25 | 1.3 | **VEREDAS** | 275d | 2025-09-23 | 2026-06-24 |  | 0d |  |
| 26 | 1.3.1 | **TRABAJOS PRELIMINARES** | 200d | 2025-09-23 | 2026-04-10 |  | 0d |  |
| 27 | 1.3.1.1 | TRAZO NIVELACION Y REPLANTEO | 200d | 2025-09-23 | 2026-04-10 | 19SS+90d | 0d |  |
| 28 | 1.3.2 | **MOVIMIENTO DE TIERRA** | 210d | 2025-09-29 | 2026-04-26 |  | 0d |  |
| 29 | 1.3.2.1 | CORTE SUPERFICIAL MANUAL | 210d | 2025-09-29 | 2026-04-26 | 27SS+6d | 0d |  |
| 30 | 1.3.2.2 | EXCAVACION MANUAL PARA UÑAS EN VEREDAS | 210d | 2025-09-29 | 2026-04-26 | 29SS | 0d |  |
| 31 | 1.3.2.3 | PERFILADO Y COMPACTADO DE SUB RASANTE EN VEREDAS | 210d | 2025-09-29 | 2026-04-26 | 30SS | 0d |  |
| 32 | 1.3.2.4 | ACARREO MATERIAL EXCEDENTE | 210d | 2025-09-29 | 2026-04-26 | 29SS | 174d | 0d |
| 33 | 1.3.2.5 | ELIMINACION DE MATERIAL EXCEDENTE CON EQUIPO | 210d | 2025-09-29 | 2026-04-26 | 32FF | 174d |  |
| 34 | 1.3.3 | **BASES GRANULAR** | 200d | 2025-10-09 | 2026-04-26 |  | 0d |  |
| 35 | 1.3.3.1 | CONFORMACION Y COMPACTACION DE BASE GRANULAR E=0.15M | 200d | 2025-10-09 | 2026-04-26 | 31SS+10d | 0d |  |
| 36 | 1.3.4 | **VEREDAS DE CONCRETO** | 203d | 2025-10-10 | 2026-04-30 |  | 0d |  |
| 37 | 1.3.4.1 | ENCOFRADO Y DESENC. PARA VEREDAS | 200d | 2025-10-10 | 2026-04-27 | 35SS+1d | 0d |  |
| 38 | 1.3.4.2 | VEREDAS DE CONCRETO F'C =175 KG/CM2, E= 0.10M | 200d | 2025-10-13 | 2026-04-30 | 37SS+3d | 0d |  |
| 39 | 1.3.4.3 | UÑAS DE VEREDAS DE CONCRETO F'C =175 KG/CM2 | 200d | 2025-10-13 | 2026-04-30 | 38SS | 37d | 0d |
| 40 | 1.3.4.4 | ACABADO PULIDO | 200d | 2025-10-13 | 2026-04-30 | 39SS | 37d | 0d |
| 41 | 1.3.4.5 | BRUÑAS SEGUN DETALLE | 200d | 2025-10-13 | 2026-04-30 | 40SS | 37d | 0d |
| 42 | 1.3.4.6 | CURADO DE VEREDAS | 200d | 2025-10-13 | 2026-04-30 | 41SS | 37d | 0d |
| 43 | 1.3.5 | **JUNTAS** | 45d | 2026-05-11 | 2026-06-24 |  | 115d |  |
| 44 | 1.3.5.1 | LIMPIEZA SUPERFICIE DE JUNTAS | 15d | 2026-05-11 | 2026-05-25 | 42FS+10d | 115d | 0d |
| 45 | 1.3.5.2 | JUNTA DE DILATACION ASFÁLTICA e=1" | 30d | 2026-05-26 | 2026-06-24 | 44 | 115d |  |
| 46 | 1.3.6 | **OTROS** | 206d | 2025-10-13 | 2026-05-06 |  | 164d |  |
| 47 | 1.3.6.1 | REPOSICION Y NIVELACION DE CAJA DE REGISTRO PARA DESAGUE | 200d | 2025-10-13 | 2026-04-30 | 38SS | 170d |  |
| 48 | 1.3.6.2 | REPOSICION Y NIVELACION DE CAJA DE AGUA | 200d | 2025-10-13 | 2026-04-30 | 38SS | 170d |  |
| 49 | 1.3.6.3 | RETIRO Y REPOSICION DE MURETES DE MEDIDORES | 6d | 2026-05-01 | 2026-05-06 | 38 | 164d |  |

| ID | WBS | Task | Duration | Start | Finish | Predecessors | Total slack | Free slack |
| --- | --- | --- | --- | --- | --- | --- | --- | --- |
| 50 | 1.4 | **MARTILLO Y RAMPAS** | 190d | 2025-10-23 | 2026-04-30 |  | 0d |  |
| 51 | 1.4.1 | **TRABAJOS PRELIMINARES** | 190d | 2025-10-23 | 2026-04-30 |  | 0d |  |
| 52 | 1.4.1.1 | TRAZO NIVELACION Y REPLANTEO | 190d | 2025-10-23 | 2026-04-30 | 38SS+10d | 0d |  |
| 53 | 1.4.2 | **MOVIMIENTO DE TIERRAS** | 190d | 2025-10-23 | 2026-04-30 |  | 0d |  |
| 54 | 1.4.2.1 | CORTE SUPERFICIAL MANUAL | 190d | 2025-10-23 | 2026-04-30 | 52SS | 0d |  |
| 55 | 1.4.2.2 | EXCAVACION MANUAL PARA UÑAS EN MARTILLOS | 190d | 2025-10-23 | 2026-04-30 | 54SS | 0d |  |
| 56 | 1.4.2.3 | PERFILADO Y COMPACTADO DE SUB RASANTE EN MARTILLOS Y RAMPAS | 190d | 2025-10-23 | 2026-04-30 | 55SS | 0d |  |
| 57 | 1.4.2.4 | ACARREO MATERIAL EXCEDENTE | 190d | 2025-10-23 | 2026-04-30 | 56SS | 0d |  |
| 58 | 1.4.2.5 | ELIMINACION DE MATERIAL EXCEDENTE CON EQUIPO | 190d | 2025-10-23 | 2026-04-30 | 57SS | 0d |  |
| 59 | 1.4.3 | **BASES GRANULAR** | 190d | 2025-10-23 | 2026-04-30 |  | 0d |  |
| 60 | 1.4.3.1 | CONFORMACION Y COMPACTACION DE BASE GRANULAR E=0.15M | 190d | 2025-10-23 | 2026-04-30 | 58SS | 0d |  |
| 61 | 1.4.4 | **CONCRETO SIMPLE** | 190d | 2025-10-23 | 2026-04-30 |  | 0d |  |
| 62 | 1.4.4.1 | ENCOFRADO Y DESENCOFRADO NORMAL PARA MARTILLOS | 190d | 2025-10-23 | 2026-04-30 | 60SS | 0d |  |
| 63 | 1.4.4.2 | MARTILLOS Y RAMPAS CONCRETO FC=175KG/CM2 | 190d | 2025-10-23 | 2026-04-30 | 62SS | 0d |  |
| 64 | 1.4.4.3 | CONCRETO DE UÑAS DE MARTILLOS FC=175KG/CM2 | 190d | 2025-10-23 | 2026-04-30 | 63SS | 0d |  |
| 65 | 1.4.4.4 | ACABADO PULIDO | 190d | 2025-10-23 | 2026-04-30 | 64SS | 170d | 0d |
| 66 | 1.4.4.5 | BRUÑAS SEGUN DETALLE | 190d | 2025-10-23 | 2026-04-30 | 65SS | 170d | 0d |
| 67 | 1.4.4.6 | CURADO DE MARTILLOS Y RAMPAS | 190d | 2025-10-23 | 2026-04-30 | 66SS | 170d |  |
| 68 | 1.5 | **SARDINELES PERALTADOS** | 338d | 2025-10-04 | 2026-09-06 |  | 0d |  |
| 69 | 1.5.1 | **TRABAJOS PRELIMINARES** | 150d | 2025-10-04 | 2026-03-02 |  | 0d |  |
| 70 | 1.5.1.1 | TRAZO NIVELACION Y REPLANTEO DE SARDINELES PERALTADOS | 150d | 2025-10-04 | 2026-03-02 | 160SS+125d | 0d |  |
| 71 | 1.5.2 | **MOVIMIENTO DE TIERRA** | 164d | 2025-10-11 | 2026-03-23 |  | 0d |  |
| 72 | 1.5.2.1 | EXCAVACION MANUAL DE TERRENO PARA SARDINELES | 150d | 2025-10-11 | 2026-03-09 | 70SS+7d | 0d |  |
| 73 | 1.5.2.2 | ACARREO MATERIAL EXCEDENTE | 150d | 2025-10-25 | 2026-03-23 | 72SS+14d | 0d |  |
| 74 | 1.5.2.3 | ELIMINACION DE MATERIAL EXCEDENTE CON EQUIPO | 150d | 2025-10-25 | 2026-03-23 | 73SS | 0d |  |

| ID | WBS | Task | Duration | Start | Finish | Predecessors | Total slack | Free slack |
| --- | --- | --- | --- | --- | --- | --- | --- | --- |
| 75 | 1.5.3 | **CONCRETO SIMPLE DE SARDINEL PERALTADO** | 180d | 2025-10-29 | 2026-04-26 |  | 0d |  |
| 76 | 1.5.3.1 | ENCOFRADO Y DESENCOFRADO SARDINELES PERALTADOS | 180d | 2025-10-29 | 2026-04-26 | 78SS | 0d |  |
| 77 | 1.5.3.2 | CONCRETO F'C=210 KG/CM2 PARA SARDINELES PERALTADOS | 180d | 2025-10-29 | 2026-04-26 | 76SS | 0d |  |
| 78 | 1.5.3.3 | ACERO FY= 4200 kg/cm2, EN SARDINELES PERALTADOS | 180d | 2025-10-29 | 2026-04-26 | 74SS+4d | 0d |  |
| 79 | 1.5.3.4 | CURADO DE SARDINEL PERALTADO | 180d | 2025-10-29 | 2026-04-26 | 77FF | 174d |  |
| 80 | 1.5.4 | **ACABADOS** | 313d | 2025-10-29 | 2026-09-06 |  | 0d |  |
| 81 | 1.5.4.1 | ACABADO PULIDO | 180d | 2025-10-29 | 2026-04-26 | 77FF | 0d |  |
| 82 | 1.5.4.2 | VESTIDURA DE DERRAMES CON BORDES BOLEADOS | 245d | 2025-10-29 | 2026-06-30 | 81SS | 0d |  |
| 83 | 1.5.4.3 | PINTADO DE LAS CARA VISTA DEL SARDINEL PERALTADO | 35d | 2026-08-03 | 2026-09-06 | 86FS+3d | 0d |  |
| 84 | 1.5.5 | **JUNTAS** | 30d | 2026-07-01 | 2026-07-30 |  | 0d |  |
| 85 | 1.5.5.1 | LIMPIEZA SUPERFICIE DE JUNTAS | 30d | 2026-07-01 | 2026-07-30 | 82 | 0d |  |
| 86 | 1.5.5.2 | JUNTA DE DILATACION ASFÁLTICA e=1" | 30d | 2026-07-01 | 2026-07-30 | 85SS | 0d |  |
| 87 | 1.6 | **SARDINELES SUMERGIDOS** | 188d | 2026-02-01 | 2026-08-07 |  | 0d |  |
| 88 | 1.6.1 | **TRABAJOS PRELIMINARES** | 99d | 2026-02-01 | 2026-05-10 |  | 0d |  |
| 89 | 1.6.1.1 | TRAZO Y REPLANTEO PARASARDINELES SUMERGIDOS | 99d | 2026-02-01 | 2026-05-10 | 160SS+245d | 0d |  |
| 90 | 1.6.2 | **MOVIMIENTO DE TIERRAS** | 119d | 2026-02-01 | 2026-05-30 |  | 0d |  |
| 91 | 1.6.2.1 | EXCAVACION MANUAL DE TERRENO PARA SARDINELES | 119d | 2026-02-01 | 2026-05-30 | 89SS | 0d |  |
| 92 | 1.6.2.2 | EXCAVACION EN LADO DEL SARDINEL SUMERGIDO PARA ENCOFRADO | 119d | 2026-02-01 | 2026-05-30 | 91SS | 0d |  |
| 93 | 1.6.2.3 | RELLENO DE TERRENO NATURAL EN LADO DEL JARDIN | 119d | 2026-02-01 | 2026-05-30 | 92SS | 0d |  |
| 94 | 1.6.2.4 | ACARREO MATERIAL EXCEDENTE | 119d | 2026-02-01 | 2026-05-30 | 93FF | 0d |  |
| 95 | 1.6.2.5 | ELIMINACION DE MATERIAL EXCEDENTE MAQUINA | 119d | 2026-02-01 | 2026-05-30 | 94FF | 0d |  |
| 96 | 1.6.3 | **CONCRETO DE SARDINEL SUMERGIDOS** | 150d | 2026-02-01 | 2026-06-30 |  | 0d |  |
| 97 | 1.6.3.1 | ENCOFRADO Y DESENCOFRADO DE SARDINEL SUMERGIDO | 119d | 2026-02-01 | 2026-05-30 | 95SS | 0d |  |
| 98 | 1.6.3.2 | CONCRETO EN SARDINEL F'C=175 KG/CM2 | 119d | 2026-02-01 | 2026-05-30 | 99SS | 0d |  |
| 99 | 1.6.3.3 | ACERO FY= 4200 kg/cm2, EN SARDINELES SUMERGIDOS | 119d | 2026-02-01 | 2026-05-30 | 97SS | 0d |  |
| 100 | 1.6.3.4 | CURADO DE SARDINEL SUMERGIDO | 150d | 2026-02-01 | 2026-06-30 | 98SS | 71d | 0d |

| ID | WBS | Task | Duration | Start | Finish | Predecessors | Total slack | Free slack |
| --- | --- | --- | --- | --- | --- | --- | --- | --- |
| 101 | 1.6.4 | **ACABADOS** | 150d | 2026-02-01 | 2026-06-30 |  | 71d |  |
| 102 | 1.6.4.1 | ACABADO PULIDO | 150d | 2026-02-01 | 2026-06-30 | 100SS | 71d | 0d |
| 103 | 1.6.5 | **JUNTAS** | 35d | 2026-07-04 | 2026-08-07 |  | 71d |  |
| 104 | 1.6.5.1 | LIMPIEZA SUPERFICIE DE JUNTAS | 5d | 2026-07-04 | 2026-07-08 | 102FS+3d | 71d | 0d |
| 105 | 1.6.5.2 | JUNTA DE DILATACION ASFÁLTICA e=1" | 30d | 2026-07-09 | 2026-08-07 | 104 | 71d |  |
| 106 | 1.7 | **ADOQUINES** | 129d | 2026-05-02 | 2026-09-07 |  | 0d |  |
| 107 | 1.7.1 | **TRABAJOS PRELIMINARES** | 99d | 2026-05-02 | 2026-08-08 |  | 0d |  |
| 108 | 1.7.1.1 | TRAZO Y REPLANTEO DE ADOQUINES | 99d | 2026-05-02 | 2026-08-08 | 98SS+90d, 14FS-100d | 0d |  |
| 109 | 1.7.2 | **MOVIMIENTO DE TIERRAS** | 129d | 2026-05-02 | 2026-09-07 |  | 0d |  |
| 110 | 1.7.2.1 | CORTE SUPERFICIAL MANUAL | 99d | 2026-05-02 | 2026-08-08 | 108SS | 0d |  |
| 111 | 1.7.2.2 | ACARREO MATERIAL EXCEDENTE | 99d | 2026-05-02 | 2026-08-08 | 110SS | 0d |  |
| 112 | 1.7.2.3 | ELIMINACION DE MATERIAL EXCEDENTE CON EQUIPO | 99d | 2026-05-02 | 2026-08-08 | 111SS | 0d |  |
| 113 | 1.7.2.4 | CONFORMACION DE BASE GRANULAR PARA ADOQUIN E=0.20 | 129d | 2026-05-02 | 2026-09-07 | 112SS | 0d |  |
| 114 | 1.7.2.5 | CAMA DE ARENA GRUESA DE 2'' | 99d | 2026-06-01 | 2026-09-07 | 113SS+30d | 0d |  |
| 115 | 1.7.3 | **ACABADOS** | 99d | 2026-06-01 | 2026-09-07 |  | 0d |  |
| 116 | 1.7.3.1 | REVESTIMIENTO DE PISO CON ADOQUINES DE CONCRETO COLOR ROJO | 99d | 2026-06-01 | 2026-09-07 | 114SS | 0d |  |
| 117 | 1.7.3.2 | REVESTIMIENTO DE PISO CON ADOQUINES DE CONCRETO COLOR PLOMO | 89d | 2026-06-01 | 2026-08-28 | 116SS | 0d |  |
| 118 | 1.7.3.3 | SELLADO DE JUNTAS DE ADOQUIN CON ARENA | 99d | 2026-06-01 | 2026-09-07 | 117SS | 40d |  |
| 119 | 1.8 | **AREAS VERDES** | 190d | 2026-04-11 | 2026-10-17 |  | 0d |  |
| 120 | 1.8.1 | **SUMINISTRO E INSTALACION DE AREAS VERDES** | 190d | 2026-04-11 | 2026-10-17 |  | 0d |  |
| 121 | 1.8.1.1 | CORTE SUPERFICIAL MANUAL | 50d | 2026-04-11 | 2026-05-30 | 98FF | 0d |  |
| 122 | 1.8.1.2 | ELIMINACION DE MATERIAL EXCEDENTE CON EQUIPO | 50d | 2026-04-11 | 2026-05-30 | 121SS | 140d |  |
| 123 | 1.8.1.3 | SUMINISTRO E INSTALACION DE TIERRA DE CHACRA | 40d | 2026-09-07 | 2026-10-16 | 83, 124FS+9d | 0d |  |
| 124 | 1.8.1.4 | COLOCACION DE BLOCK GRASS | 140d | 2026-04-11 | 2026-08-28 | 128SS, 38FS-40d | 0d |  |
| 125 | 1.8.1.5 | SUMINISTRO E INSTALACION DE GRASS NATURAL | 40d | 2026-09-08 | 2026-10-17 | 123SS+1d | 0d |  |
| 126 | 1.8.1.6 | SEMBRADO DE PALMERAS INCL. SUMIN. Y COLOCACION | 40d | 2026-09-08 | 2026-10-17 | 123SS+1d | 0d |  |
| 127 | 1.8.1.7 | CONFORMACION DE BASE GRANULAR PARA BLOCK GRASS E=0.20 | 140d | 2026-04-11 | 2026-08-28 | 121FS-50d | 0d |  |
| 128 | 1.8.1.8 | CAMA DE ARENA GRUESA E= 3 cm | 140d | 2026-04-11 | 2026-08-28 | 127SS | 0d |  |

| ID | WBS | Task | Duration | Start | Finish | Predecessors | Total slack | Free slack |
| --- | --- | --- | --- | --- | --- | --- | --- | --- |
| 129 | 1.9 | **PAVIMENTACIÓN** | 415d | 2025-05-28 | 2026-07-16 |  | 0d |  |
| 130 | 1.9.1 | **TRAMO I** | 355d | 2025-06-27 | 2026-06-16 |  | 0d |  |
| 131 | 1.9.1.1 | **OBRAS PRELIMINARES** | 90d | 2025-06-27 | 2025-09-24 |  | 0d |  |
| 132 | 1.9.1.1.1 | TRAZO Y REPLANTEO | 90d | 2025-06-27 | 2025-09-24 | 5SS+62d | 0d |  |
| 133 | 1.9.1.2 | **MOVIMIENTO DE TIERRA** | 320d | 2025-06-27 | 2026-05-12 |  | 0d |  |
| 134 | 1.9.1.2.1 | CORTE DE MATERIAL SUELTO C/MAQUINARIA PARA PAVIMENTACION | 320d | 2025-06-27 | 2026-05-12 | 132SS | 0d |  |
| 135 | 1.9.1.2.2 | PERFILADO Y COMPACTADO DE SUBRASANTE DE PAVIMENTOS | 320d | 2025-06-27 | 2026-05-12 | 134SS | 0d |  |
| 136 | 1.9.1.2.3 | MEJORAMIENTO DE SUBRASANTE E=0.10M (over max 4") | 320d | 2025-06-27 | 2026-05-12 | 135SS | 0d |  |
| 137 | 1.9.1.2.4 | TERRAPLENES CON MATERIAL DE CANTERA | 3d | 2025-06-27 | 2025-06-29 | 136SS | 0d |  |
| 138 | 1.9.1.2.5 | ELIMINACION DE MATERIAL EXCEDENTE CON EQUIPO | 320d | 2025-06-27 | 2026-05-12 | 137SS | 0d |  |
| 139 | 1.9.1.3 | **SUB BASES Y BASES** | 320d | 2025-06-27 | 2026-05-12 |  | 0d |  |
| 140 | 1.9.1.3.1 | SUB BASE GRANULA E=0.26M | 320d | 2025-06-27 | 2026-05-12 | 138SS | 0d |  |
| 141 | 1.9.1.3.2 | BASE GRANULAR E=0.20M | 320d | 2025-06-27 | 2026-05-12 | 140SS | 0d |  |
| 142 | 1.9.1.4 | **PAVIMENTOS** | 265d | 2025-09-25 | 2026-06-16 |  | 0d |  |
| 143 | 1.9.1.4.1 | IMPRIMACION ASFALTICA | 260d | 2025-09-25 | 2026-06-11 | 141SS+90d | 0d |  |
| 144 | 1.9.1.4.2 | CARPETA ASFALTICA EN CALIENTE E= 3" | 260d | 2025-09-26 | 2026-06-12 | 143SS+1d | 0d |  |
| 145 | 1.9.1.4.3 | SELLADO ASFALTICO | 12d | 2026-06-05 | 2026-06-16 | 144FF+4d | 0d |  |
| 146 | 1.9.1.5 | **OTROS** | 140d | 2025-08-14 | 2025-12-31 |  | 290d |  |
| 147 | 1.9.1.5.1 | NIVELACION DE LOSA Y TAPA DE BUZON DE CONCRETO | 140d | 2025-08-14 | 2025-12-31 | 141FF-132d | 290d | 0d |
| 148 | 1.9.1.5.2 | ACERO DE REFUERZO F'Y=4200 KG/CM2 EN LOSA DE TECHO DE BUZON | 140d | 2025-08-14 | 2025-12-31 | 147FF | 290d |  |
| 149 | 1.9.2 | **TRAMO II** | 415d | 2025-05-28 | 2026-07-16 |  | 0d |  |
| 150 | 1.9.2.1 | **OBRAS PRELIMINARES** | 120d | 2025-05-28 | 2025-09-24 |  | 0d |  |
| 151 | 1.9.2.1.1 | TRAZO Y REPLANTEO | 120d | 2025-05-28 | 2025-09-24 | 5SS+32d | 0d |  |
| 152 | 1.9.2.2 | **MOVIMIENTO DE TIERRA** | 364d | 2025-05-28 | 2026-05-26 |  | 0d |  |
| 153 | 1.9.2.2.1 | CORTE DE MATERIAL SUELTO C/MAQUINARIA PARA PAVIMENTACION | 360d | 2025-05-28 | 2026-05-22 | 151SS | 0d |  |
| 154 | 1.9.2.2.2 | PERFILADO Y COMPACTADO DE SUBRASANTE DE PAVIMENTOS | 360d | 2025-06-01 | 2026-05-26 | 153SS+4d | 0d |  |
| 155 | 1.9.2.2.3 | MEJORAMIENTO DE SUBRASANTE E=0.15M (over max. 4") | 360d | 2025-06-01 | 2026-05-26 | 154SS | 0d |  |
| 156 | 1.9.2.2.4 | TERRAPLENES CON MATERIAL DE CANTERA | 10d | 2025-06-01 | 2025-06-10 | 153SS+4d | 494d |  |
| 157 | 1.9.2.2.5 | ELIMINACION DE MATERIAL EXCEDENTE CON EQUIPO | 360d | 2025-05-28 | 2026-05-22 | 153SS | 148d |  |

| ID | WBS | Task | Duration | Start | Finish | Predecessors | Total slack | Free slack |
| --- | --- | --- | --- | --- | --- | --- | --- | --- |
| 158 | 1.9.2.3 | **SUB BASES Y BASES** | 360d | 2025-06-01 | 2026-05-26 |  | 0d |  |
| 159 | 1.9.2.3.1 | SUB BASE GRANULAR E=0.26M | 360d | 2025-06-01 | 2026-05-26 | 155SS | 0d |  |
| 160 | 1.9.2.3.2 | BASE GRANULAR E=20 m | 360d | 2025-06-01 | 2026-05-26 | 159SS | 0d |  |
| 161 | 1.9.2.4 | **PAVIMENTOS** | 38d | 2026-06-09 | 2026-07-16 |  | 0d |  |
| 162 | 1.9.2.4.1 | IMPRIMACION ASFALTICA | 20d | 2026-06-09 | 2026-06-28 | 160FS+8d, 180SS+3d, 181SS+3d | 0d |  |
| 163 | 1.9.2.4.2 | CARPETA ASFALTICA EN CALIENTE E= 3" | 20d | 2026-06-11 | 2026-06-30 | 162SS+2d, 64FS+41d | 0d |  |
| 164 | 1.9.2.4.3 | SELLADO ASFALTICO | 16d | 2026-07-01 | 2026-07-16 | 163 | 0d |  |
| 165 | 1.9.2.5 | **OTROS** | 10d | 2026-06-01 | 2026-06-10 |  | 129d |  |
| 166 | 1.9.2.5.1 | NIVELACION DE LOSA Y TAPA DE BUZON DE CONCRETO | 10d | 2026-06-01 | 2026-06-10 | 160FS+5d | 129d | 0d |
| 167 | 1.9.2.5.2 | ACERO DE REFUERZO F'Y=4200 KG/CM2 EN LOSA DE TECHO DE BUZON | 10d | 2026-06-01 | 2026-06-10 | 166FF | 129d |  |
| 168 | 1.10 | **SEÑALIZACION VIAL Y SEMAFORIZACION** | 104d | 2026-07-06 | 2026-10-17 |  | 0d |  |
| 169 | 1.10.1 | **SEÑALIZACION VIAL** | 104d | 2026-07-06 | 2026-10-17 |  | 0d |  |
| 170 | 1.10.1.1 | SEÑAL INFORMATIVA | 7d | 2026-07-06 | 2026-07-12 | 163FS+5d | 83d | 0d |
| 171 | 1.10.1.2 | SEÑAL PREVENTIVA | 7d | 2026-07-13 | 2026-07-19 | 170 | 83d | 0d |
| 172 | 1.10.1.3 | SEÑAL REGLAMENTARIA | 7d | 2026-07-20 | 2026-07-26 | 171 | 83d |  |
| 173 | 1.10.1.4 | POSTE DE SOPORTE PARA SEÑALES | 21d | 2026-07-06 | 2026-07-26 | 170SS | 83d |  |
| 174 | 1.10.1.5 | MARCAS EN EL PAVIMENTO | 60d | 2026-08-06 | 2026-10-04 | 164FS+20d, 145FS+50d | 0d |  |
| 175 | 1.10.1.6 | PINTURA DE TRAFICO CONTINUA Y DISCONTINUA | 65d | 2026-08-06 | 2026-10-09 | 174SS | 0d |  |
| 176 | 1.10.1.7 | PINTADO DE RAMPAS PARA DISCAPACITADOS | 6d | 2026-10-10 | 2026-10-15 | 175 | 0d |  |
| 177 | 1.10.1.8 | REDUCTOR DE CAUCHO | 2d | 2026-10-16 | 2026-10-17 | 176 | 0d |  |
| 178 | 1.11 | **INSTALACIONES ELECTRICAS** | 286d | 2025-12-22 | 2026-10-03 |  | 14d |  |
| 179 | 1.11.1 | **PRELIMINARES** | 120d | 2026-06-06 | 2026-10-03 |  | 0d |  |
| 180 | 1.11.1.1 | REUBICACION DE POSTES DE MEDIA TENSION | 120d | 2026-06-06 | 2026-10-03 | 160SS+370d | 0d |  |
| 181 | 1.11.1.2 | REUBICACION DE POSTES DE BAJA TENSION | 120d | 2026-06-06 | 2026-10-03 | 180SS | 0d |  |

| ID | WBS | Task | Duration | Start | Finish | Predecessors | Total slack | Free slack |
| --- | --- | --- | --- | --- | --- | --- | --- | --- |
| 182 | 1.11.2 | **SEMAFORIZACION** | 275d | 2025-12-22 | 2026-09-22 |  | 25d |  |
| 183 | 1.11.2.1 | **MOVIMIENTO DE TIERRAS** | 160d | 2025-12-22 | 2026-05-30 |  | 25d |  |
| 184 | 1.11.2.1.1 | EXCAVACION MANUAL DE ZANJAS | 160d | 2025-12-22 | 2026-05-30 | 60SS+60d | 25d | 0d |
| 185 | 1.11.2.2 | **ELIMINACIÓN DE MATERIAL EXCEDENTE** | 160d | 2025-12-22 | 2026-05-30 |  | 140d |  |
| 186 | 1.11.2.2.1 | ACARREO MATERIAL EXCEDENTE | 160d | 2025-12-22 | 2026-05-30 | 184SS | 140d | 0d |
| 187 | 1.11.2.2.2 | ELIMINACION DE MATERIAL EXCEDENTE CON EQUIPO | 160d | 2025-12-22 | 2026-05-30 | 186SS | 140d |  |
| 188 | 1.11.2.3 | **CONCRETO ARMADO** | 150d | 2025-12-22 | 2026-05-20 |  | 128d |  |
| 189 | 1.11.2.3.1 | CONCRETO PREMEZCLADO f'c= 210 kg/cm2 CMTO TIPO I P/DADOS EN SEMÁFOROS | 150d | 2025-12-22 | 2026-05-20 | 190SS | 128d | 0d |
| 190 | 1.11.2.3.2 | ENCOFRADO Y DESENCOFRADO P/BASES EN SEMÁFOROS | 150d | 2025-12-22 | 2026-05-20 | 191SS | 128d | 0d |
| 191 | 1.11.2.3.3 | ACERO DE REFUERZO Fy=4200 GRADO 60 EN SEMAFOROS | 150d | 2025-12-22 | 2026-05-20 | 184SS | 128d | 0d |
| 192 | 1.11.2.4 | **SUMINISTRO E INSTALACIÓN DE ESTRUCTURA METÁLICA** | 11d | 2026-06-01 | 2026-06-11 |  | 128d |  |
| 193 | 1.11.2.4.1 | SUMNISTRO E INSTALACION DE ESTRUCTURA METALICA Y ACCES PARA SEMÁFORO VEHICULAR TIPO SEMIPORTICO O BANDERA | 5d | 2026-06-01 | 2026-06-05 | 189FS+11d | 128d | 0d |
| 194 | 1.11.2.4.2 | POSTE PARA SEMAFORO (L=6.00M.) | 1d | 2026-06-06 | 2026-06-06 | 193 | 128d | 0d |
| 195 | 1.11.2.4.3 | POSTE PARA SEMAFORO PEATONAL (L=4M) | 3d | 2026-06-07 | 2026-06-09 | 194 | 128d | 0d |
| 196 | 1.11.2.4.4 | PORTICO PARA SEMAFORO (L=30M) | 2d | 2026-06-10 | 2026-06-11 | 195 | 128d |  |
| 197 | 1.11.2.5 | **SUMINISTRO E INSTALACIÓN DE CABLES ELÉCTRICOS PARA SEMAFORIZACION** | 91d | 2026-06-02 | 2026-08-31 |  | 25d |  |
| 198 | 1.11.2.5.1 | SUMINISTRO E INSTALACIÓN DE CABLE DE CONTROL DE 4x1.5mm2 | 18d | 2026-08-01 | 2026-08-18 | 203 | 26d | 0d |
| 199 | 1.11.2.5.2 | SUMINISTRO E INSTALACIÓN DE CABLE DE CONTROL DE 3x1.5mn2 | 18d | 2026-08-01 | 2026-08-18 | 198SS | 33d | 0d |
| 200 | 1.11.2.5.3 | SUMINISTRO E INSTALA CABLE DE ACOMETIDA 2x4 MM2 | 18d | 2026-08-01 | 2026-08-18 | 199SS | 33d | 0d |
| 201 | 1.11.2.5.4 | SUMINISTRO E INSTALA CABLE ELECTRICO 1X10 MM2 TW | 18d | 2026-08-01 | 2026-08-18 | 200SS | 33d | 0d |
| 202 | 1.11.2.5.5 | CAJA DE PASE TIPO CE-2 | 60d | 2026-06-02 | 2026-07-31 | 184FS+2d | 78d |  |
| 203 | 1.11.2.5.6 | CANALIZACIÓN PARA LAS INSTALACIONES ELÉCTRICAS Ø 3" | 60d | 2026-06-02 | 2026-07-31 | 184FS+2d | 26d | 0d |
| 204 | 1.11.2.5.7 | SISTEMA DE PUESTA A TIERRA | 7d | 2026-08-19 | 2026-08-25 | 201 | 26d | 0d |
| 205 | 1.11.2.5.8 | SUMINISTRO DE EE.EE. (INC. MURETE) | 6d | 2026-08-26 | 2026-08-31 | 204 | 25d | 0d |

| ID | WBS | Task | Duration | Start | Finish | Predecessors | Total slack | Free slack |
| --- | --- | --- | --- | --- | --- | --- | --- | --- |
| 206 | 1.11.2.6 | **SUMINISTRO E INSTALACION DE SEMAFORO** | 15d | 2026-09-01 | 2026-09-15 |  | 25d |  |
| 207 | 1.11.2.6.1 | CONTROLADOR DE TRÁFICO (SUMINISTRO E INSTALACIÓN). | 3d | 2026-09-01 | 2026-09-03 | 205 | 25d | 0d |
| 208 | 1.11.2.6.2 | SEMÁFORO ADOSADO VEHICULAR IC-3L CON LED'S | 4d | 2026-09-04 | 2026-09-07 | 207 | 25d | 0d |
| 209 | 1.11.2.6.3 | SEMAFORO PEATONAL 1C-2L CON LED'S | 5d | 2026-09-08 | 2026-09-12 | 208 | 25d | 0d |
| 210 | 1.11.2.6.4 | SEMAFORO LED CONTADOR HORARIO 300 mm ADOSADO O SUSPENDIDO (SUMINISTRO E INSTALACION) | 3d | 2026-09-13 | 2026-09-15 | 209 | 25d | 0d |
| 211 | 1.11.2.7 | **VARIOS** | 275d | 2025-12-22 | 2026-09-22 |  | 25d |  |
| 212 | 1.11.2.7.1 | DUCTO DE CONCRETO | 140d | 2025-12-22 | 2026-05-10 | 184SS | 160d |  |
| 213 | 1.11.2.7.2 | BLOQUE DE CONCRETO CONTRA IMPACTO | 7d | 2026-09-16 | 2026-09-22 | 210 | 25d |  |
| 214 | 1.11.3 | **PANELES SOLARES** | 151d | 2026-05-02 | 2026-09-29 |  | 18d |  |
| 215 | 1.11.3.1 | **MOVIMIENTO DE TIERRAS** | 60d | 2026-05-02 | 2026-06-30 |  | 18d |  |
| 216 | 1.11.3.1.1 | EXCAVACION MANUAL DE ZANJAS | 60d | 2026-05-02 | 2026-06-30 | 113SS | 18d | 0d |
| 217 | 1.11.3.2 | **ELIMINACIÓN DE MATERIAL EXCEDENTE** | 60d | 2026-05-02 | 2026-06-30 |  | 109d |  |
| 218 | 1.11.3.2.1 | ACARREO DE MATERIAL EXCEDENTE | 60d | 2026-05-02 | 2026-06-30 | 216SS | 109d |  |
| 219 | 1.11.3.2.2 | ELIMINACION DE MATERIAL EXCEDENTE CON EQUIPO | 60d | 2026-05-02 | 2026-06-30 | 216SS | 109d |  |
| 220 | 1.11.3.3 | **SUMINISTRO E INSTALACION DE TUBERIAS Y PANELES SOLARES** | 151d | 2026-05-02 | 2026-09-29 |  | 18d |  |
| 221 | 1.11.3.3.1 | COLOCACIÓN DE CAMA DE ARENA | 90d | 2026-05-02 | 2026-07-30 | 216SS | 18d | 0d |
| 222 | 1.11.3.3.2 | SUMINISTRO E INSTALACIÓN DE TUBERIA PVC Ø 2"-P | 90d | 2026-05-02 | 2026-07-30 | 221SS | 18d | 0d |
| 223 | 1.11.3.3.3 | COLOCACIÓN Y COMPACTACIÓN CON MATERIAL PROPIO | 90d | 2026-05-02 | 2026-07-30 | 222SS | 18d | 0d |
| 224 | 1.11.3.3.4 | COLOCACIÓN DE CAJA DE PASE | 90d | 2026-05-03 | 2026-07-31 | 223SS+1d | 18d | 0d |
| 225 | 1.11.3.3.5 | SUMINISTRO E INSTALACIÓN DE POSTE LUMINARIA CON PANELES SOLARES | 60d | 2026-08-01 | 2026-09-29 | 224 | 18d |  |
| 226 | 1.12 | **MOBILIARIO URBANO** | 50d | 2026-08-29 | 2026-10-17 |  | 0d |  |
| 227 | 1.12.1 | **TACHOS DE BASURA** | 19d | 2026-09-01 | 2026-09-19 |  | 0d |  |
| 228 | 1.12.1.1 | **MOVIMIENTO DE TIERRAS** | 4d | 2026-09-01 | 2026-09-04 |  | 0d |  |
| 229 | 1.12.1.1.1 | EXCAVACION MANUAL | 4d | 2026-09-01 | 2026-09-04 | 117FS+3d | 0d |  |
| 230 | 1.12.1.1.2 | ELIMINACION DE MATERIAL EXCEDENTE | 1d | 2026-09-04 | 2026-09-04 | 229FF | 43d |  |

| ID | WBS | Task | Duration | Start | Finish | Predecessors | Total slack | Free slack |
| --- | --- | --- | --- | --- | --- | --- | --- | --- |
| 231 | 1.12.1.2 | **CONCRETO SIMPLE** | 11d | 2026-09-05 | 2026-09-15 |  | 28d |  |
| 232 | 1.12.1.2.1 | CONCRETO F"C=175 KG/CM2 PARA LOSAS DE FONDO - PISO | 1d | 2026-09-14 | 2026-09-14 | 233 | 28d | 0d |
| 233 | 1.12.1.2.2 | ENCOFRADO Y DESENCOFRADO LOSA | 9d | 2026-09-05 | 2026-09-13 | 229 | 28d | 0d |
| 234 | 1.12.1.2.3 | CURADO DE LOSA DE CONCRETO | 1d | 2026-09-15 | 2026-09-15 | 232 | 32d |  |
| 235 | 1.12.1.3 | **ACABADOS** | 5d | 2026-09-15 | 2026-09-19 |  | 28d |  |
| 236 | 1.12.1.3.1 | ACABADO PULIDO e=1cm | 1d | 2026-09-15 | 2026-09-15 | 232 | 28d | 0d |
| 237 | 1.12.1.3.2 | SUMINISTRO E INSTALACION DE TACHOS DE BASURA | 4d | 2026-09-16 | 2026-09-19 | 236 | 28d |  |
| 238 | 1.12.2 | **BANCAS DE MADERA** | 22d | 2026-08-29 | 2026-09-19 |  | 28d |  |
| 239 | 1.12.2.1 | **SUMINISTRO E INSTALACION DE BANCAS** | 22d | 2026-08-29 | 2026-09-19 |  | 28d |  |
| 240 | 1.12.2.1.1 | SUMINISTRO E INSTALACION DE BANCAS | 22d | 2026-08-29 | 2026-09-19 | 117 | 28d |  |
| 241 | 1.12.3 | **SUMIISTRO Y COLOCACIONDE BOLARDOS** | 47d | 2026-09-01 | 2026-10-17 |  | 0d |  |
| 242 | 1.12.3.1 | SUMINISTRO Y COLOCACIO DE BOLARDOS | 47d | 2026-09-01 | 2026-10-17 | 229SS | 0d |  |
| 243 | 1.12.4 | **SUMINISTRO E INSTALACION DE TACHAS REFLECTIVAS BIDIRECCIONALES** | 8d | 2026-10-10 | 2026-10-17 |  | 0d |  |
| 244 | 1.12.4.1 | SUMINISTRO E INSTALACIONES DE TACHAS REFLECTIVAS BIDIRECCIONALES | 8d | 2026-10-10 | 2026-10-17 | 175 | 0d |  |
| 245 | 1.12.5 | **SUMINISTRO E INSTALACION DE MINIGIMNASIO** | 2d | 2026-10-10 | 2026-10-11 |  | 3d |  |
| 246 | 1.12.5.1 | SUMINISTRO E INSTALACION DE MINIGIMNASIO | 2d | 2026-10-10 | 2026-10-11 | 244SS | 3d | 0d |
| 247 | 1.12.6 | **GUARDAVIA** | 5d | 2026-10-10 | 2026-10-14 |  | 3d |  |
| 248 | 1.12.6.1 | SUMINISTRO E INSTALACION DE GUARDAVIA | 5d | 2026-10-10 | 2026-10-14 | 246SS | 3d |  |
| 249 | 1.12.7 | **TOPELLANTAS** | 40d | 2026-09-08 | 2026-10-17 |  | 0d |  |
| 250 | 1.12.7.1 | SUMINISTRO E INSTALACION DE TOPELLANTAS | 40d | 2026-09-08 | 2026-10-17 | 116 | 0d |  |
| 251 | 1.13 | **PLAN DE SEGURIDAD Y SALUD EN EL TRABAJO** | 540d | 2025-04-26 | 2026-10-17 |  | 0d |  |
| 252 | 1.13.1 | ELABORACION DE PLAN DE SEGURIDAD Y SALUD | 5d | 2025-04-26 | 2025-04-30 |  | 0d |  |
| 253 | 1.13.2 | EQUIPO DE PROTECCION INDIVIDUAL | 540d | 2025-04-26 | 2026-10-17 | 252SS | 0d |  |
| 254 | 1.14 | **PLAN DE MANEJO AMBIENTAL** | 540d | 2025-04-26 | 2026-10-17 |  | 0d |  |
| 255 | 1.14.1 | **MANEJO DE EFLUENTE Y RESIDUOS SOLIDOS** | 540d | 2025-04-26 | 2026-10-17 |  | 0d |  |
| 256 | 1.14.1.1 | ALQUILER DE BAÑOS QUIMICOS | 540d | 2025-04-26 | 2026-10-17 | 253SS | 0d |  |
| 257 | 1.14.1.2 | CONTENEDOR DE RESIDUOS SOLIDO NO PELIGROSO | 5d | 2025-04-26 | 2025-04-30 | 256SS | 0d |  |
| 258 | 1.14.1.3 | GESTIÓN Y DISPOSICIÓN FINAL DE RESIDUOS PELIGROSOS | 5d | 2026-10-13 | 2026-10-17 | 256FF | 0d |  |

| ID | WBS | Task | Duration | Start | Finish | Predecessors | Total slack | Free slack |
| --- | --- | --- | --- | --- | --- | --- | --- | --- |
| 259 | 1.14.2 | **PLAN DE SEÑALIZACION** | 540d | 2025-04-26 | 2026-10-17 |  | 0d |  |
| 260 | 1.14.2.1 | SEÑALIZACION TEMPORAL DE PLAN AMBIENTAL Y SEGURIDAD | 540d | 2025-04-26 | 2026-10-17 | 257SS | 0d |  |
| 261 | 1.14.3 | **PLAN DE AREAS AUXILIARES** | 540d | 2025-04-26 | 2026-10-17 |  | 0d |  |
| 262 | 1.14.3.1 | RIEGO PARA MITIGACION DEL POLVO | 540d | 2025-04-26 | 2026-10-17 | 256SS | 0d |  |
| 263 | 1.14.4 | **PLAN DE ASUNTOS AMBIENTALES** | 540d | 2025-04-26 | 2026-10-17 |  | 0d |  |
| 264 | 1.14.4.1 | CAPACITACION DIRIGIDA A LOS TRABAJADORES SOBRE EDUCACION AMBIENTAL | 540d | 2025-04-26 | 2026-10-17 | 262SS | 0d |  |
| 265 | 1.14.5 | **PLAN DE MONITOREO AMBIENTAL** | 523d | 2025-04-26 | 2026-09-30 |  | 0d |  |
| 266 | 1.14.5.1 | MONITOREO DE LA CALIDAD DE RUIDO AMBIENTAL | 523d | 2025-04-26 | 2026-09-30 | 264SS | 0d |  |
| 267 | 1.14.5.2 | MONITOREO DE LA CALIDAD DEL AIRE | 523d | 2025-04-26 | 2026-09-30 | 266SS | 22d |  |
| 268 | 1.14.6 | **PLAN DE CONTINGENCIA** | 540d | 2025-04-26 | 2026-10-17 |  | 0d |  |
| 269 | 1.14.6.1 | RECURSO PARA RESPUESTA ANTE PLAN DE CONTIGENCIA | 540d | 2025-04-26 | 2026-10-17 | 266SS | 0d |  |
| 270 | 1.14.7 | **PLAN DE REFORESTACIÓN** | 90d | 2026-07-20 | 2026-10-17 |  | 0d |  |
| 271 | 1.14.7.1 | ARBORIZACIÓN CON FINES DE RECUPERACIÓN Y PROTECCIÓN AMBIENTAL URBANA | 90d | 2026-07-20 | 2026-10-17 | 264FF | 0d |  |
| 272 | 1.15 | **PLAN DE DESVIO VEHICULAR** | 540d | 2025-04-26 | 2026-10-17 |  | 0d |  |
| 273 | 1.15.1 | **TRATAMIENTO SUPERFICIAL DOBLE DE VIAS ALTERNAS** | 456d | 2025-04-26 | 2026-07-25 |  | 0d |  |
| 274 | 1.15.1.1 | TRAZO Y REPLANTEO | 400d | 2025-04-26 | 2026-05-30 | 5SS | 0d |  |
| 275 | 1.15.1.2 | CORTE DE MATERIAL SUELTO C/MAQUINARIA P/TRATAMIENTO VIAL | 400d | 2025-04-26 | 2026-05-30 | 274SS | 84d | 0d |
| 276 | 1.15.1.3 | PERFILADO Y COMPACTACION DE VIAS ALTERNAS | 400d | 2025-04-26 | 2026-05-30 | 275SS | 84d | 0d |
| 277 | 1.15.1.4 | BASE GRANULAR E=20 m | 400d | 2025-04-26 | 2026-05-30 | 276SS | 84d | 0d |
| 278 | 1.15.1.5 | IMPRIMACION ASFALTICA | 395d | 2025-05-01 | 2026-05-30 | 277SS+5d | 84d | 0d |
| 279 | 1.15.1.6 | CARPETA ASFALTICA EN CALIENTE E= 1'' | 395d | 2025-05-01 | 2026-05-30 | 278SS | 84d | 0d |
| 280 | 1.15.1.7 | PINTURA DE TRAFICO CONTINUA Y DISCONTINUA | 400d | 2025-06-01 | 2026-07-05 | 279SS+31d | 84d | 0d |
| 281 | 1.15.1.8 | MARCA EN EL PAVIMENTO | 390d | 2025-07-01 | 2026-07-25 | 280SS+30d | 84d | 0d |
| 282 | 1.15.1.9 | DESBROCE Y LIMPIEZA DE VIAS ALTERNAS | 35d | 2026-05-07 | 2026-06-10 | 281SS+310d | 129d |  |
| 283 | 1.15.1.10 | DEMOLICION DE PAVIMENTO ASFALTICO | 30d | 2025-05-11 | 2025-06-09 | 5SS+15d | 495d |  |
| 284 | 1.15.1.11 | ELIMINACIÓN DE MATERIAL EXCEDENTE | 400d | 2025-04-26 | 2026-05-30 | 274SS | 140d |  |
| 285 | 1.15.1.12 | PARCHADO PROFUNDO CON MAC | 30d | 2026-05-11 | 2026-06-09 | 5SS+380d | 130d |  |

| ID | WBS | Task | Type | Duration | Start | Finish | Predecessors | Total slack | Free slack |
| --- | --- | --- | --- | --- | --- | --- | --- | --- | --- |
| 286 | 1.15.2 | **DESVIO VEHICULAR** |  | 540d | 2025-04-26 | 2026-10-17 |  | 0d |  |
| 287 | 1.15.2.1 | MANTENIMIENTO DE TRANSITO PERMANENTE |  | 540d | 2025-04-26 | 2026-10-17 | 274SS | 0d |  |
| 288 | 1.15.2.2 | SUMINISTRO E INSTALACION DE SEMAFORO PROVISIONAL |  | 15d | 2026-04-16 | 2026-04-30 | 287SS+355d | 170d |  |
| 289 | 1.15.3 | **ESTRUCTURAS HIDRAULICAS EN VIAS ALTERNAS** |  | 61d | 2025-04-26 | 2025-06-25 |  | 479d |  |
| 290 | 1.15.3.1 | TRAZO Y REPLANTEO DE ESTRUCTURAS HIDRAULICAS |  | 5d | 2025-04-26 | 2025-04-30 | 274SS | 479d | 0d |
| 291 | 1.15.3.2 | EXCAVACION NO CLASIFICADA PARA ESTRUCTURAS |  | 7d | 2025-05-01 | 2025-05-07 | 290 | 479d | 0d |
| 292 | 1.15.3.3 | COLOCACIÓN DE CAMA DE ARENA |  | 3d | 2025-05-08 | 2025-05-10 | 291 | 479d | 0d |
| 293 | 1.15.3.4 | RELLENO CON MATERIAL PROPIO/EQUIPO |  | 5d | 2025-05-18 | 2025-05-22 | 298 | 479d | 0d |
| 294 | 1.15.3.5 | ELIMINACION DE MATERIAL EXCEDENTE CON EQUIPO |  | 3d | 2025-05-23 | 2025-05-25 | 293 | 510d |  |
| 295 | 1.15.3.6 | CONCRETO F'C= 175 KG/CM2 PARA CABEZALES |  | 15d | 2025-06-01 | 2025-06-15 | 296 | 479d | 0d |
| 296 | 1.15.3.7 | ACERO FY=4200 KG/CM2, EN CABEZALES |  | 9d | 2025-05-23 | 2025-05-31 | 293 | 479d | 0d |
| 297 | 1.15.3.8 | EMBOQUILLADO DE PIEDRA E=0.15 M |  | 10d | 2025-06-16 | 2025-06-25 | 295 | 479d |  |
| 298 | 1.15.3.9 | ALCANTARILLA TMC Ø 36'', E=2.0 MM |  | 7d | 2025-05-11 | 2025-05-17 | 292 | 479d | 0d |
| 299 | 1.15.4 | **PLAN DE DIFUSION** |  | 500d | 2025-06-05 | 2026-10-17 |  | 0d |  |
| 300 | 1.15.4.1 | IMPLEMENTACION DE HERRAMIENTAS DE DIFUSION |  | 500d | 2025-06-05 | 2026-10-17 | 252FS+35d | 0d |  |
| 301 | 1.15.5 | **PLAN DE GESTION SOCIAL** |  | 500d | 2025-06-05 | 2026-10-17 |  | 0d |  |
| 302 | 1.15.5.1 | ELABORACIÓN E IMPLEMENTACION DEL PLAN DE GESTION SOCIAL |  | 500d | 2025-06-05 | 2026-10-17 | 300SS | 0d |  |
| 303 | 1.16 | **PLAN DE MONITOREO ARQUEOLOGICO** |  | 250d | 2025-05-26 | 2026-01-30 |  | 260d |  |
| 304 | 1.16.1 | PLAN DE MONITOREO ARQUEOLOGICO |  | 250d | 2025-05-26 | 2026-01-30 | 287SS+30d | 260d |  |
| 305 | 2 | FIN | milestone | 0d | 2026-10-17 | 2026-10-17 | 177 | 0d |  |
